# 施工进度

Schedule from a web Gantt chart, 2025-07-02 to 2025-10-30.
Every day is a working day

## Schedule

| ID | WBS | Task | Duration | Start | Finish |
| --- | --- | --- | --- | --- | --- |
| 2 | 1 | **现场准备、深化设计、交底、临时设施、防水** | 75d | 2025-07-02 | 2025-09-14 |
| 3 | 1.1 | 交付团队入场、项目启动会 | 4d | 2025-07-29 | 2025-08-01 |
| 4 | 1.2 | 深化设计、设计交底、图纸会审 | 10d | 2025-07-23 | 2025-08-01 |
| 5 | 1.3 | 技术、安全交底 | 1d | 2025-07-02 | 2025-07-02 |
| 6 | 1.4 | 现场临时设施配置 | 6d | 2025-08-01 | 2025-08-06 |
| 7 | 1.5 | 防水施工及试验 | 31d | 2025-08-15 | 2025-09-14 |
| 8 | 2 | **主要设备/材料到货计划** | 22d | 2025-08-06 | 2025-08-27 |
| 9 | 2.1 | 水泥/防静电漆/顶部漆采购，到货 | 11d | 2025-08-06 | 2025-08-16 |
| 10 | 2.2 | 设备底座、钢结构、管道材料采购到货 | 21d | 2025-08-07 | 2025-08-27 |
| 12 | 3 | 机房施工 | 31d | 2025-09-15 | 2025-10-15 |
| 13 | 4 | 测试验收 | 16d | 2025-10-15 | 2025-10-30 |
